# RIVERSIDE SUBSTATION UPGRADE

How a schedule from Primavera P6 changed from version to version. A marks actual dates.

## Version 1 (data date 2026-01-31, saved 2026-01-31, file riverside-previous.xer)

Note of the change: Merge pull request #12 from MatthewPaver/feat/riverside-second-fixture

| ID | WBS | Task | Duration | Start | Finish | Predecessors | Complete | Total float |
| --- | --- | --- | --- | --- | --- | --- | --- | --- |
|  | NS | **Riverside Substation Upgrade** |  | 2026-01-05 | 2027-11-22 |  |  |  |
| RS-000 |  | Notice to proceed | 0d | 2026-01-05 A | 2026-01-05 A |  | 100% |  |
|  | BUILD | **Construction** |  | 2026-06-23 | 2027-06-21 |  |  |  |
| RS-300 |  | Substation civils and foundations | 120d | 2026-06-23 | 2026-12-07 | RS-120 |  | 10d |
| RS-400 |  | Primary plant installation | 120d | 2027-01-05 | 2027-06-21 | RS-210, RS-300 |  | 7d |
|  | COMM | **Testing and Commissioning** |  | 2027-06-22 | 2027-11-22 |  |  |  |
| RS-500 |  | Protection testing | 60d | 2027-06-22 | 2027-09-13 | RS-400 |  | 5d |
| RS-600 |  | System commissioning | 50d | 2027-09-14 | 2027-11-22 | RS-500 |  | 3d |
| RS-900 |  | Ready for service | 0d | 2027-11-01 | 2027-11-01 | RS-600 |  | 3d |
|  | DES | **Design and Consents** |  | 2026-01-06 | 2026-06-22 |  |  |  |
| RS-100 |  | Detailed design mobilisation | 20d | 2026-01-06 A | 2026-02-02 | RS-000 | 25% | 20d |
| RS-110 |  | Primary substation detailed design | 40d | 2026-02-03 | 2026-03-30 | RS-100 |  | 15d |
| RS-120 |  | Planning consent determination | 60d | 2026-03-31 | 2026-06-22 | RS-110 |  | 13d |
|  | ENAB | **Enabling Works** |  | 2026-02-02 | 2026-07-17 |  |  |  |
| RS-701 |  | Temporary access design | 10d | 2026-02-02 | 2026-02-13 | RS-000 |  | 40d |
| RS-702 |  | Temporary access permits | 10d | 2026-02-16 | 2026-02-27 | RS-701 |  | 39d |
| RS-703 |  | Site compound layout | 10d | 2026-03-02 | 2026-03-13 | RS-702 |  | 38d |
| RS-704 |  | Welfare procurement | 10d | 2026-03-16 | 2026-03-27 | RS-703 |  | 37d |
| RS-705 |  | Fencing design | 10d | 2026-03-30 | 2026-04-10 | RS-704 |  | 36d |
| RS-706 |  | Security review | 10d | 2026-04-13 | 2026-04-24 | RS-705 |  | 35d |
| RS-707 |  | Survey control setup | 10d | 2026-04-27 | 2026-05-08 | RS-706 |  | 34d |
| RS-708 |  | Temporary power design | 10d | 2026-05-11 | 2026-05-22 | RS-707 |  | 33d |
| RS-709 |  | Temporary water design | 10d | 2026-05-25 | 2026-06-05 | RS-708 |  | 32d |
| RS-710 |  | Compound installation | 10d | 2026-06-08 | 2026-06-19 | RS-709 |  | 31d |
| RS-711 |  | Access route installation | 10d | 2026-06-22 | 2026-07-03 | RS-710 |  | 30d |
| RS-712 |  | Enabling works inspection | 10d | 2026-07-06 | 2026-07-17 | RS-711 |  | 29d |
|  | PROC | **Long Lead Procurement** |  | 2026-06-23 | 2027-01-04 |  |  |  |
| RS-210 |  | Switchgear manufacture and FAT | 140d | 2026-06-23 | 2027-01-04 | RS-120 |  | 11d |

## Version 2 (data date 2026-02-28, saved 2026-02-28, file riverside-current.xer)

Note of the change: feat: add Riverside second synthetic XER pair

Last finish 2027-11-22 → 2028-03-14 (+113d). Complete tasks 1 → 2.

Added:

| ID | Task | Duration | Start | Finish | Predecessors |
| --- | --- | --- | --- | --- | --- |
| RS-200 | Long lead procurement release | 30d | 2026-07-28 | 2026-09-07 | RS-120 |

Changed:

| ID | Task | Start | Finish | Duration | Complete | Total float | Predecessors |
| --- | --- | --- | --- | --- | --- | --- | --- |
| NS | **Riverside Substation Upgrade** |  | 2027-11-22 → 2028-03-14 (+113d) |  |  |  |  |
| BUILD | **Construction** | 2026-06-23 → 2026-09-15 (+84d) | 2027-06-21 → 2027-10-05 (+106d) |  |  |  |  |
| RS-300 | Substation civils and foundations | 2026-06-23 → 2026-09-15 (+84d) | 2026-12-07 → 2027-03-15 (+98d) | 120d → 130d |  | 10d → -5d | RS-120 → RS-200 FS+5d |
| RS-400 | Primary plant installation | 2027-01-05 → 2027-04-20 (+105d) | 2027-06-21 → 2027-10-05 (+106d) |  |  | 7d → -6d |  |
| COMM | **Testing and Commissioning** | 2027-06-22 → 2027-10-06 (+106d) | 2027-11-22 → 2028-03-14 (+113d) |  |  |  |  |
| RS-500 | Protection testing | 2027-06-22 → 2027-10-06 (+106d) | 2027-09-13 → 2028-01-04 (+113d) | 60d → 65d |  | 5d → -7d |  |
| RS-600 | System commissioning | 2027-09-14 → 2028-01-05 (+113d) | 2027-11-22 → 2028-03-14 (+113d) |  |  | 3d → -9d |  |
| RS-900 | Ready for service | 2027-11-01 → 2028-02-26 (+117d) | 2027-11-01 → 2028-02-26 (+117d) |  |  | 3d → -9d |  |
| DES | **Design and Consents** |  | 2026-06-22 → 2026-07-27 (+35d) |  |  |  |  |
| RS-100 | Detailed design mobilisation |  | 2026-02-02 → 2026-02-09 A (+7d) |  | 25% → 100% | 20d → none |  |
| RS-110 | Primary substation detailed design | 2026-02-03 → 2026-02-10 A (+7d) | 2026-03-30 → 2026-05-04 (+35d) | 40d → 60d | 0% → 25% | 15d → 5d |  |
| RS-120 | Planning consent determination | 2026-03-31 → 2026-05-05 (+35d) | 2026-06-22 → 2026-07-27 (+35d) |  |  | 13d → 2d |  |
| ENAB | **Enabling Works** | 2026-02-02 → 2026-02-04 (+2d) | 2026-07-17 → 2026-07-19 (+2d) |  |  |  |  |
| RS-701 | Temporary access design | 2026-02-02 → 2026-02-04 (+2d) | 2026-02-13 → 2026-02-15 (+2d) |  |  |  |  |
| RS-702 | Temporary access permits | 2026-02-16 → 2026-02-18 (+2d) | 2026-02-27 → 2026-03-01 (+2d) |  |  |  |  |
| RS-703 | Site compound layout | 2026-03-02 → 2026-03-04 (+2d) | 2026-03-13 → 2026-03-15 (+2d) |  |  |  |  |
| RS-704 | Welfare procurement | 2026-03-16 → 2026-03-18 (+2d) | 2026-03-27 → 2026-03-29 (+2d) |  |  |  |  |
| RS-705 | Fencing design | 2026-03-30 → 2026-04-01 (+2d) | 2026-04-10 → 2026-04-12 (+2d) |  |  |  |  |
| RS-706 | Security review | 2026-04-13 → 2026-04-15 (+2d) | 2026-04-24 → 2026-04-26 (+2d) |  |  |  |  |
| RS-707 | Survey control setup | 2026-04-27 → 2026-04-29 (+2d) | 2026-05-08 → 2026-05-10 (+2d) |  |  |  |  |
| RS-708 | Temporary power design | 2026-05-11 → 2026-05-13 (+2d) | 2026-05-22 → 2026-05-24 (+2d) |  |  |  |  |
| RS-709 | Temporary water design | 2026-05-25 → 2026-05-27 (+2d) | 2026-06-05 → 2026-06-07 (+2d) |  |  |  |  |
| RS-710 | Compound installation | 2026-06-08 → 2026-06-10 (+2d) | 2026-06-19 → 2026-06-21 (+2d) |  |  |  |  |
| RS-711 | Access route installation | 2026-06-22 → 2026-06-24 (+2d) | 2026-07-03 → 2026-07-05 (+2d) |  |  |  |  |
| RS-712 | Enabling works inspection | 2026-07-06 → 2026-07-08 (+2d) | 2026-07-17 → 2026-07-19 (+2d) |  |  |  |  |
| PROC | **Long Lead Procurement** | 2026-06-23 → 2026-07-28 (+35d) | 2027-01-04 → 2027-04-19 (+105d) |  |  |  |  |
| RS-210 | Switchgear manufacture and FAT | 2026-06-23 → 2026-09-08 (+77d) | 2027-01-04 → 2027-04-19 (+105d) | 140d → 160d |  | 11d → -4d | RS-120 → RS-200 |
